Schedule from MS Project, 2016-10-14 to 2017-02-06.
Universidad de Alicante

## Calendars

- Estándar: Mon-Fri 09:00-13:00, 15:00-19:00; Sat-Sun off.

## Resources

| Resource |
| --- |
| Julia |
| Nerea |
| Gaspar |
| Stoycho |
| Sandra |
| Catherine |

## Schedule

| ID | WBS | Task | Type | Duration | Start | Finish | Predecessors | Total slack | Free slack | Constraint | Resources | Work |
| --- | --- | --- | --- | --- | --- | --- | --- | --- | --- | --- | --- | --- |
| 2 | 1 | **HITO 0** |  | 1d? | 2016-10-14 | 2016-10-14 |  | 80.25d |  |  |  |  |
| 3 | 1.1 | **PM** |  | 1d? | 2016-10-14 | 2016-10-14 |  | 80.25d |  |  |  |  |
| 4 | 1.1.1 | Rellenar documento de Concepto del proyecto |  | 1d? | 2016-10-14 | 2016-10-14 |  | 70.88d |  |  |  |  |
| 5 | 1.1.2 | Rellenar versión inicial del documento Especificación |  | 1d? | 2016-10-14 | 2016-10-14 |  | 70.88d |  |  |  |  |
| 6 | 1.1.3 | Completar y revisar documento Especificación. |  | 1d? | 2016-10-14 | 2016-10-14 |  | 70.88d |  |  |  |  |
| 7 | 1.1.4 | Elaborar el Presupuesto (hoja de cálculo) |  | 1d? | 2016-10-14 | 2016-10-14 |  | 70.88d |  |  |  |  |
| 8 | 1.1.5 | Crear WBS del proyecto en Project. |  | 1d? | 2016-10-14 | 2016-10-14 |  | 70.88d |  |  |  |  |
| 9 | 1.1.6 | Crear plan general (Tareas y precedencias básicas). en Project |  | 1d? | 2016-10-14 | 2016-10-14 |  | 70.88d |  |  |  |  |
| 10 | 1.1.7 | *Entrega (Documento Especificacion, Presupuesto, WBS) | milestone | 0d | 2016-10-14 | 2016-10-14 |  | 71.88d |  |  |  |  |
| 11 | 1.2 | **NM** |  | 1d? | 2016-10-14 | 2016-10-14 |  | 80.25d |  |  |  |  |
| 12 | 1.2.1 | Diseño funcional y visualización del proyecto: documentación con la especificación de todas las funcionalidades del sistema |  | 1d? | 2016-10-14 | 2016-10-14 |  | 70.88d |  |  |  |  |
| 13 | 1.2.2 | Especificación y visualización de elementos y tecnologías a utilizar, por ejemplo mediante la definición de una infografía del proyecto |  | 1d? | 2016-10-14 | 2016-10-14 |  | 70.88d |  |  |  |  |
| 15 | 2 | **HITO 1** |  | 50.88d? | 2016-10-14 | 2016-12-23 |  | 0d |  |  |  | 895.47h |
| 16 | 2.1 | **Iteración 1 (2 nov)** |  | 13d? | 2016-10-14 | 2016-11-02 |  | 34.12d |  |  |  | 85.34h |
| 17 | 2.1.1 | [PM] Registrar de tiempos y % de realización de tareas en Project |  | 12d | 2016-10-14 | 2016-10-31 |  | 38.88d |  |  | Catherine [2%]; Gaspar [2%]; Julia [2%]; Nerea [2%]; Sandra [2%]; Stoycho [2%] | 11.52h |
| 18 | 2.1.2 | [PM] Detallar plan iteraciones del mes de Noviembre. Creación Subtareas y precedencias en Project |  | 23h | 2016-10-14 | 2016-10-18 |  | 34.12d | 0d |  | Catherine [5%]; Gaspar [5%]; Julia [5%]; Nerea [5%]; Sandra [5%]; Stoycho [5%] | 6.9h |
| 19 | 2.1.3 | [PM] Detallar plan iteraciones del mes de Noviembre. Asignar recursos a las tareas en Project. |  | 23h | 2016-10-18 | 2016-10-21 | 18 | 34.12d | 0d |  | Catherine [5%]; Gaspar [5%]; Julia [5%]; Nerea [5%]; Sandra [5%]; Stoycho [5%] | 6.9h |
| 20 | 2.1.4 | [PD] Hacer cartel del juego |  | 10h | 2016-10-14 | 2016-10-17 |  | 47d | 4.5d |  | Sandra [85%] | 8.5h |
| 21 | 2.1.5 | [V1] Entregar documento de diseño de mecánicas de los NPCs |  | 20h | 2016-10-14 | 2016-10-18 |  | 45.75d | 3.25d |  | Julia [85%] | 17h |
| 22 | 2.1.6 | [V1] Entregar documento de diseño de sistemas de toma de decisión |  | 22h | 2016-10-14 | 2016-10-18 |  | 45.5d | 3d |  | Gaspar [85%] | 18.7h |
| 23 | 2.1.7 | **[V2] Diseñar e implementar la arquitectura basada en componentes (diagrama de clases e implementación)** |  | 1d? | 2016-10-14 | 2016-10-14 |  | 47.25d | 4.75d |  | Nerea [85%]; Stoycho [85%] | 13.6h |
| 24 | 2.1.7.1 | Instalación Irrlicht |  | 1d? | 2016-10-14 | 2016-10-14 |  | 47.25d |  |  |  |  |
| 25 | 2.1.7.2 | Aprendizaje Xcode |  | 1d? | 2016-10-14 | 2016-10-14 |  | 47.25d |  |  |  |  |
| 26 | 2.1.7.3 | Instalación Box2D |  | 1d? | 2016-10-14 | 2016-10-14 |  | 47.25d |  |  |  |  |
| 27 | 2.1.7.4 | Diseño inicial del diagrama de componentes |  | 1d? | 2016-10-14 | 2016-10-14 |  | 47.25d |  |  |  |  |
| 28 | 2.1.7.5 | Compilación multiplataforma |  | 1d? | 2016-10-14 | 2016-10-14 |  | 47.25d |  |  |  |  |
| 29 | 2.1.8 | [PM] Comparar la planificación prevista y real en Project hito 1. |  | 21h | 2016-10-21 | 2016-10-26 | 20, 21, 22, 23, 18, 19 | 42.5d |  |  | Catherine [1%]; Gaspar [1%]; Julia [1%]; Nerea [1%]; Sandra [1%]; Stoycho [1%] | 1.26h |
| 30 | 2.1.9 | [PM] Confeccionar Informes de iteración e informe resumen de Hito 1 |  | 1d? | 2016-10-14 | 2016-10-14 |  | 49.88d |  |  | Catherine [2%]; Gaspar [2%]; Julia [2%]; Nerea [2%]; Sandra [2%]; Stoycho [2%] | 0.96h |
| 31 | 2.1.10 | Entregables Iteración 1 | milestone | 0d | 2016-11-02 | 2016-11-02 |  | 26.88d | 0d | start no earlier than 2016-11-02 |  |  |

| ID | WBS | Task | Duration | Start | Finish | Predecessors | Total slack | Free slack | Resources | Work |
| --- | --- | --- | --- | --- | --- | --- | --- | --- | --- | --- |
| 32 | 2.2 | **Iteración 2 (16 nov)** | 11d? | 2016-11-02 | 2016-11-16 | 31 | 26.88d |  |  | 127.18h |
| 33 | 2.2.1 | [PM] Registrar de tiempos y % de realización de tareas en Project | 11d | 2016-11-02 | 2016-11-16 | 18, 19 | 26.88d |  | Catherine [2%]; Gaspar [2%]; Julia [2%]; Nerea [2%]; Sandra [2%]; Stoycho [2%] | 10.56h |
| 34 | 2.2.2 | [PM] Detallar plan iteraciones del mes de Diciembre. Creación Subtareas y precedencias en Project | 23h | 2016-11-02 | 2016-11-04 | 18, 19 | 35d |  | Catherine [5%]; Gaspar [5%]; Julia [5%]; Nerea [5%]; Sandra [5%]; Stoycho [5%] | 6.9h |
| 35 | 2.2.3 | [PM] Detallar plan iteraciones del mes de Diciembre. Asignar recursos a las tareas en Project. | 23h | 2016-11-02 | 2016-11-04 | 18, 19 | 35d |  | Catherine [5%]; Gaspar [5%]; Julia [5%]; Nerea [5%]; Sandra [5%]; Stoycho [5%] | 6.9h |
| 36 | 2.2.4 | [PM] Rellenar documento Gestión de riesgos | 23h | 2016-11-02 | 2016-11-04 | 18, 19 | 35d |  | Sandra [85%] | 19.55h |
| 37 | 2.2.5 | [V1] Entregar documento de diseño técnico de la arquitectura de la IA | 20h | 2016-11-02 | 2016-11-04 | 18, 19 | 30.75d | 0d | Nerea [20%] | 4h |
| 38 | 2.2.6 | **[V1] Gestión de estados de la IA con Máquinas de Estados** | 2.12d | 2016-11-04 | 2016-11-08 | 37 | 30.75d | 0d | Gaspar [85%] | 14.45h |
| 39 | 2.2.6.1 | Implementar tabla de los distintos estados | 17h | 2016-11-04 | 2016-11-08 |  | 30.75d |  |  |  |
| 40 | 2.2.6.2 | Describir los estados | 5h | 2016-11-04 | 2016-11-07 |  | 32.25d |  |  |  |
| 41 | 2.2.7 | **[V1] Sistema de toma de decisión con Árboles de Decisión** | 2.5d | 2016-11-08 | 2016-11-11 | 38 | 30.75d |  | Gaspar [85%] | 17h |
| 42 | 2.2.7.1 | Dibujar árboles de decisión | 20h | 2016-11-08 | 2016-11-11 |  | 30.75d |  |  |  |
| 43 | 2.2.7.2 | Documento de sistemas máquina de estados/árbol de decisión | 12h | 2016-11-08 | 2016-11-10 |  | 31.75d |  |  |  |
| 44 | 2.2.8 | **[V2] Control del player por motor de físicas 2D, dynamic o kinematic** | 1.25d | 2016-11-02 | 2016-11-03 | 18, 19 | 36.12d | 0d | Nerea [65%]; Stoycho [85%] | 15h |
| 45 | 2.2.8.1 | Detectar input de teclado mediante Irrlich | 2h | 2016-11-02 | 2016-11-02 |  | 37.12d |  |  |  |
| 46 | 2.2.8.2 | Creación de mundo físico | 6h | 2016-11-02 | 2016-11-02 |  | 36.62d |  |  |  |
| 47 | 2.2.8.3 | Aplicar movimiento al objeto físico según el input | 1h | 2016-11-02 | 2016-11-02 |  | 37.25d |  |  |  |
| 48 | 2.2.8.4 | Instalación de SFML | 2h | 2016-11-02 | 2016-11-02 |  | 37.12d |  |  |  |
| 49 | 2.2.8.5 | Detectar input del Joystick | 1h | 2016-11-02 | 2016-11-02 |  | 37.25d |  |  |  |
| 50 | 2.2.8.6 | Aplicar movimiento al objeto físico según el input | 5h | 2016-11-02 | 2016-11-02 |  | 36.75d |  |  |  |
| 51 | 2.2.8.7 | Aplicar rotación al objeto físico según el input del Joystick | 8h | 2016-11-02 | 2016-11-02 |  | 36.38d |  |  |  |
| 52 | 2.2.8.8 | Aplicar rotación al objeto físico según la posición del ratón | 10h | 2016-11-02 | 2016-11-03 |  | 36.12d |  |  |  |
| 53 | 2.2.9 | **[V2] Sistema de depuración visual de las físicas** | 0.5d | 2016-11-03 | 2016-11-03 | 44 | 36.12d |  | Nerea [65%]; Stoycho [85%] | 6h |
| 54 | 2.2.9.1 | Creación y carga de modelo wireframe 3D en Blender | 1h | 2016-11-03 | 2016-11-03 |  | 36.5d |  |  |  |
| 55 | 2.2.9.2 | Detección de las colisiones | 4h | 2016-11-03 | 2016-11-03 |  | 36.12d |  |  |  |

| ID | WBS | Task | Type | Duration | Start | Finish | Predecessors | Total slack | Free slack | Constraint | Resources | Work |
| --- | --- | --- | --- | --- | --- | --- | --- | --- | --- | --- | --- | --- |
| 56 | 2.2.10 | **[V2] Creación de un cargador de niveles** |  | 1.88d | 2016-11-02 | 2016-11-03 | 18, 19 | 34.12d | 0d |  | Julia [85%] | 12.75h |
| 57 | 2.2.10.1 | Cargar tmx con capas de objetos |  | 15h | 2016-11-02 | 2016-11-03 |  | 34.12d |  |  |  |  |
| 58 | 2.2.10.2 | Cargar objetos en 3D |  | 10h | 2016-11-02 | 2016-11-03 |  | 34.75d |  |  |  |  |
| 59 | 2.2.11 | [V2] Formato propio para la definición de los niveles (documento con la especificación del formato) |  | 15h | 2016-11-03 | 2016-11-07 | 56 | 34.12d |  |  | Julia [85%] | 12.75h |
| 60 | 2.2.12 | [PM] Comparar la planificación prevista y real en Project hito 1. |  | 6h | 2016-11-16 | 2016-11-16 |  | 27.12d |  | start no earlier than 2016-11-16 | Catherine [1%]; Gaspar [1%]; Julia [1%]; Nerea [1%]; Sandra [1%]; Stoycho [1%] | 0.36h |
| 61 | 2.2.13 | [PM] Confeccionar Informes de iteración e informe resumen de Hito 1 |  | 1d? | 2016-11-16 | 2016-11-16 |  | 26.88d |  | finish no earlier than 2016-11-16 | Catherine [2%]; Gaspar [2%]; Julia [2%]; Nerea [2%]; Sandra [2%]; Stoycho [2%] | 0.96h |
| 62 | 2.2.14 | Entregables iteración 2 | milestone | 0d | 2016-11-16 | 2016-11-16 |  | 18.62d | 0d | finish no earlier than 2016-11-16 |  |  |
| 63 | 2.3 | **Iteración 3 (30 nov)** |  | 9d? | 2016-11-17 | 2016-11-30 | 62 | 17.88d |  |  |  | 159.46h |
| 64 | 2.3.1 | [PM] Preparar exposición |  | 2h | 2016-11-17 | 2016-11-17 |  | 26.62d |  |  | Gaspar [2%]; Julia [2%]; Nerea [2%]; Sandra [2%]; Stoycho [2%]; Catherine [2%] | 0.24h |
| 65 | 2.3.2 | [PM] Registrar de tiempos y % de realización de tareas en Project |  | 21h | 2016-11-17 | 2016-11-21 |  | 24.25d |  |  | Catherine [2%]; Gaspar [2%]; Julia [2%]; Nerea [2%]; Sandra [2%]; Stoycho [2%] | 2.52h |
| 66 | 2.3.3 | [PM] Aplicar el modelo EVA en Project |  | 21h | 2016-11-17 | 2016-11-21 |  | 24.25d |  |  | Catherine [2%]; Julia [2%]; Gaspar [2%]; Nerea [2%]; Sandra [2%]; Stoycho [2%] | 2.52h |
| 67 | 2.3.4 | [PD] Hacer video con animación del logo de la empresa |  | 15h | 2016-11-17 | 2016-11-18 |  | 25d |  |  | Sandra [85%] | 12.75h |
| 68 | 2.3.5 | [V1] Sistema de toma de decisión con Behaviour Trees |  | 51h | 2016-11-17 | 2016-11-25 |  | 18.62d | 0d |  | Gaspar [85%]; Julia [40%] | 63.75h |
| 69 | 2.3.6 | [V2] Implementación de cámara de seguimiento |  | 20h | 2016-11-17 | 2016-11-21 |  | 19.38d | 0d |  | Julia [45%] | 9h |
| 70 | 2.3.7 | [V2] Implementación de cámara inteligente que ajuste ángulo y zoom |  | 25h | 2016-11-21 | 2016-11-24 | 69 | 19.38d | 0.75d |  | Stoycho [85%]; Julia [40%] | 31.25h |
| 71 | 2.3.8 | [V2] Gestión de colisiones de la cámara (sistema de depuración para ver colisiones) |  | 15h | 2016-11-25 | 2016-11-29 | 70, 68 | 18.62d |  |  | Julia [85%] | 12.75h |
| 72 | 2.3.9 | [V2] Usar trazado de rayos y otros tests de las físicas |  | 20h | 2016-11-17 | 2016-11-21 |  | 24.38d |  |  | Nerea [85%] | 17h |
| 73 | 2.3.10 | [TAG] Crear visualizador OpenGL 4.X simple, con datos por programa. Shader básico. |  | 6h | 2016-11-17 | 2016-11-17 |  | 26.12d |  |  | Stoycho [70%] | 4.2h |
| 74 | 2.3.11 | [PM] Comparar la planificación prevista y real en Project hito 1. |  | 21h | 2016-11-17 | 2016-11-21 |  | 24.25d |  |  | Catherine [2%]; Gaspar [2%]; Julia [2%]; Nerea [2%]; Sandra [2%]; Stoycho [2%] | 2.52h |
| 75 | 2.3.12 | [PM] Confeccionar Informes de iteración e informe resumen de Hito 1 |  | 1d? | 2016-11-17 | 2016-11-17 |  | 25.88d |  |  | Catherine [2%]; Gaspar [2%]; Julia [2%]; Nerea [2%]; Sandra [2%]; Stoycho [2%] | 0.96h |
| 76 | 2.3.13 | Entregables iteración 3 | milestone | 0d | 2016-11-30 | 2016-11-30 |  | 10d | 0d | start no earlier than 2016-11-30 |  |  |
| 77 | 2.4 | **Iteración 4 (14 dic)** |  | 10d? | 2016-11-30 | 2016-12-14 | 76 | 7.88d |  |  |  | 166.91h |
| 78 | 2.4.1 | [PM] Registrar de tiempos y % de realización de tareas en Project |  | 21h | 2016-11-30 | 2016-12-02 |  | 15.25d |  |  | Catherine [2%]; Gaspar [2%]; Julia [2%]; Nerea [2%]; Sandra [2%]; Stoycho [2%] | 2.52h |
| 79 | 2.4.2 | [NM] Definición de métricas e indicadores del proyecto. En el contexto indicado se definen los indicadores principales del proyecto |  | 10h | 2016-11-30 | 2016-12-01 |  | 16.62d |  |  | Julia [30%]; Nerea [45%] | 7.5h |
| 80 | 2.4.3 | [V1] Sistema de percepción sensorial (vista, oído, olfato, canales…) |  | 28h | 2016-11-30 | 2016-12-05 |  | 14.38d |  |  | Gaspar [85%]; Julia [57%] | 39.76h |
| 81 | 2.4.4 | [V2] Mecánicas básicas entidades sin IA |  | 25h | 2016-11-30 | 2016-12-05 |  | 10.38d | 0d |  | Julia [5%]; Nerea [30%]; Stoycho [50%] | 21.25h |
| 82 | 2.4.5 | [V2] Mecánicas de acción |  | 35h | 2016-12-05 | 2016-12-09 | 81 | 10.38d |  |  | Nerea [50%]; Stoycho [49%]; Julia [50%] | 52.15h |
| 83 | 2.4.6 | [V2] Mecánicas de puzzle |  | 25h | 2016-12-08 | 2016-12-13 |  | 8.75d |  | start no earlier than 2016-12-08 | Julia [50%]; Nerea [50%]; Stoycho [49%] | 37.25h |
| 84 | 2.4.7 | [TAG] Crear visualizador OpenGL 4.X simple, con datos por fichero. Shader básico. |  | 5h | 2016-11-30 | 2016-11-30 |  | 17.25d |  |  | Stoycho [60%] | 3h |
| 85 | 2.4.8 | [PM] Comparar la planificación prevista y real en Project hito 1. |  | 21h | 2016-11-30 | 2016-12-02 |  | 15.25d |  |  | Stoycho [2%]; Catherine [2%]; Gaspar [2%]; Julia [2%]; Nerea [2%]; Sandra [2%] | 2.52h |
| 86 | 2.4.9 | [PM] Confeccionar Informes de iteración e informe resumen de Hito 1 |  | 1d? | 2016-11-30 | 2016-11-30 |  | 16.88d |  |  | Catherine [2%]; Gaspar [2%]; Nerea [2%]; Julia [2%]; Sandra [2%]; Stoycho [2%] | 0.96h |
| 87 | 2.4.10 | Entregables iteración 4 | milestone | 0d | 2016-12-14 | 2016-12-14 |  | 0d |  | start no earlier than 2016-12-14 |  |  |

| ID | WBS | Task | Duration | Start | Finish | Predecessors | Total slack | Free slack | Resources | Work |
| --- | --- | --- | --- | --- | --- | --- | --- | --- | --- | --- |
| 88 | 2.5 | **Iteración 5 (23 dic)** | 7.88d | 2016-12-14 | 2016-12-23 | 87 | 0d |  |  | 356.58h |
| 89 | 2.5.1 | [PM] Elaborar la presentación del Hito 1 | 14h | 2016-12-14 | 2016-12-15 |  | 4.38d | 0d | Catherine [50%]; Gaspar [50%]; Julia [50%]; Nerea [50%]; Sandra [50%]; Stoycho [50%] | 42h |
| 90 | 2.5.2 | [PM] Exponer la presentación del Hito 1 | 14h | 2016-12-15 | 2016-12-19 | 89 | 4.38d |  | Catherine [1%]; Gaspar [1%]; Julia [1%]; Nerea [1%]; Sandra [1%]; Stoycho [1%] | 0.84h |
| 91 | 2.5.3 | [PM] Registrar de tiempos y % de realización de tareas en Project | 21h | 2016-12-14 | 2016-12-16 |  | 0d |  | Catherine [50%]; Gaspar [50%]; Julia [50%]; Nerea [50%]; Sandra [50%]; Stoycho [50%] | 63h |
| 92 | 2.5.4 | [PM] Comparar la planificación prevista y real en Project hito 1. | 21h | 2016-12-16 | 2016-12-21 | 91 | 0d |  | Catherine [99%]; Gaspar [99%]; Julia [99%]; Nerea [99%]; Sandra [99%]; Stoycho [99%] | 124.74h |
| 93 | 2.5.5 | [PM] Confeccionar Informes de iteración e informe resumen de Hito 1 | 21h | 2016-12-21 | 2016-12-23 | 92 | 0d |  | Catherine; Gaspar; Julia; Nerea; Sandra; Stoycho | 126h |
| 95 | 3 | **HITO 2** | 30.38d | 2016-12-23 | 2017-02-06 | 15 | 0d |  |  | 378.74h |
| 96 | 3.1 | **Iteración 1 (31 dic)** | 2.62d | 2016-12-23 | 2016-12-28 |  | 0d |  |  | 12.12h |
| 97 | 3.1.1 | [PM] Detallar plan iteraciones del mes de Enero. Creación Subtareas y precedencias en Project | 3h | 2016-12-23 | 2016-12-26 |  | 2.25d |  | Stoycho [2%]; Sandra [2%]; Nerea [2%]; Gaspar [2%]; Julia [2%]; Catherine [2%] | 0.36h |
| 98 | 3.1.2 | [PM] Detallar plan iteraciones del mes de Enero. Asignar recursos a las tareas en Project. | 3h | 2016-12-23 | 2016-12-26 |  | 2.25d |  | Catherine [5%]; Gaspar [5%]; Julia [5%]; Nerea [5%]; Sandra [5%]; Stoycho [5%] | 0.9h |
| 99 | 3.1.3 | [PM] Comparar la planificación prevista y real en Project hito 2. | 21h | 2016-12-23 | 2016-12-28 |  | 0d |  | Catherine [1%]; Gaspar [1%]; Julia [1%]; Nerea [1%]; Sandra [1%]; Stoycho [1%] | 1.26h |
| 100 | 3.1.4 | [PM] Registrar de tiempos y % de realización de tareas en Project | 1.33d | 2016-12-23 | 2016-12-27 |  | 1.29d |  | Sandra [90%] | 9.6h |
| 101 | 3.2 | **Iteración 2 (7 ene)** | 1.88d | 2016-12-28 | 2016-12-30 | 96 | 0d |  |  | 15h |
| 102 | 3.2.1 | [TAG] Gestor de recursos: Parser de objetos en multiples formatos, salida en modo texto | 15h | 2016-12-28 | 2016-12-30 |  | 0d |  | Stoycho | 15h |
| 103 | 3.3 | **Iteración 3 (14 ene)** | 5.88d | 2016-12-30 | 2017-01-09 | 101 | 0d |  |  | 109h |
| 104 | 3.3.1 | [V1] Comunicación simulada básica entre NPCs (Blackboard) | 47h | 2016-12-30 | 2017-01-09 |  | 0d |  | Gaspar; Julia | 94h |
| 105 | 3.3.2 | [PD] Creación de los menús / HUD | 5h | 2016-12-30 | 2016-12-30 |  | 5.25d |  | Sandra | 5h |
| 106 | 3.3.3 | [V2] Integración de librería para GUI | 5h | 2016-12-30 | 2016-12-30 |  | 5.25d |  | Nerea; Stoycho | 10h |
| 107 | 3.4 | **Iteración 4 (21 ene)** | 4.38d | 2017-01-09 | 2017-01-13 | 103 | 0d |  |  | 70h |
| 108 | 3.4.1 | [V2] Power-ups y elementos adicionales | 35h | 2017-01-09 | 2017-01-13 |  | 0d |  | Stoycho; Nerea | 70h |
| 109 | 3.5 | **Iteración 5 (30 ene)** | 15.62d | 2017-01-13 | 2017-02-06 | 107 | 0d |  |  | 172.62h |
| 110 | 3.5.1 | [V1] Sistema de búsqueda de caminos y control (Pathplanning/following) | 125h | 2017-01-13 | 2017-02-06 |  | 0d |  | Gaspar [50%]; Julia [40%] | 100h |
| 111 | 3.5.2 | [V1] Sistema de memoria de estado y reacción para NPCs | 34h | 2017-01-13 | 2017-01-19 |  | 11.38d |  | Julia [50%]; Gaspar [50%] | 34h |
| 112 | 3.5.3 | [NM]Incorporación de open data, API's, y otras fuentes heterogéneas | 50h | 2017-01-13 | 2017-01-23 |  | 9.38d |  | Julia [10%]; Nerea [10%] | 10h |
| 113 | 3.5.4 | [PM] Confeccionar Informes de iteración e informe resumen de Hito 2 | 5h | 2017-01-13 | 2017-01-16 |  | 15d |  | Catherine; Gaspar; Julia; Nerea [2%]; Sandra [2%]; Stoycho | 0.2h |
| 114 | 3.5.5 | [PM] Reestimar proyecto. | 29h | 2017-01-13 | 2017-01-19 |  | 12d |  | Sandra [98%] | 28.42h |

| ID | WBS | Task | Duration | Start | Finish | Total slack |
| --- | --- | --- | --- | --- | --- | --- |
| 115 | 4 | **HITO 3** | 1d? | 2016-10-14 | 2016-10-14 | 80.25d |
| 116 | 4.1 | **PM** | 1d? | 2016-10-14 | 2016-10-14 | 80.25d |
| 117 | 4.1.1 | Detallar plan iteraciones del mes de Febrero-Marzo. Creación Subtareas y precedencias en Project | 1d? | 2016-10-14 | 2016-10-14 | 70.88d |
| 118 | 4.1.2 | Detallar plan iteraciones del mes de Febrero-Marzo Asignar recursos a las tareas en Project. | 1d? | 2016-10-14 | 2016-10-14 | 70.88d |
| 119 | 4.1.3 | Registrar de tiempos y % de realización de tareas en Project | 1d? | 2016-10-14 | 2016-10-14 | 70.88d |
| 120 | 4.1.4 | Comparar la planificación prevista y real en Project hito 3. | 1d? | 2016-10-14 | 2016-10-14 | 70.88d |
| 121 | 4.1.5 | Confeccionar Informes de iteración e informe resumen de Hito 3 | 1d? | 2016-10-14 | 2016-10-14 | 70.88d |
| 122 | 4.1.6 | Elaborar la presentación del Hito 3 | 1d? | 2016-10-14 | 2016-10-14 | 70.88d |
| 123 | 4.1.7 | Exponer la presentación del Hito 3 | 1d? | 2016-10-14 | 2016-10-14 | 70.88d |
| 124 | 4.2 | **TAG** | 1d? | 2016-10-14 | 2016-10-14 | 80.25d |
| 125 | 4.2.1 | Arbol de la escena: Tipos de datos para nodos (completo) y entidades (sólo clase padre; clases hijas sin contenido), construcción del árbol, recorrido del árbol, salida en modo texto | 1d? | 2016-10-14 | 2016-10-14 | 70.88d |
| 126 | 4.2.2 | Arbol de la escena: Tipos de datos para entidades de tipo transformacion (traslación, rotación y escalado relativos y absolutos. Otras transformaciones). Salida en modo texto | 1d? | 2016-10-14 | 2016-10-14 | 70.88d |
| 127 | 4.2.3 | Arbol de la escena: Tipos de datos para entidades de tipo cámara y luz (cámaras y luces de dos tipos). Salida en modo texto | 1d? | 2016-10-14 | 2016-10-14 | 70.88d |
| 128 | 4.2.4 | Arbol de la escena: Tipos de datos para entidades de tipo malla. Salida en modo texto | 1d? | 2016-10-14 | 2016-10-14 | 70.88d |
| 129 | 4.2.5 | Arbol de la escena: Tipos de datos para entidades de tipo animación (cuadro a cuadro). Salida en modo texto | 1d? | 2016-10-14 | 2016-10-14 | 70.88d |
| 130 | 4.2.6 | Gestor de recursos: Carga de modelos en formato múltiple en las entidades de tipo malla. Carga de varios ficheros para animación. Salida en modo texto | 1d? | 2016-10-14 | 2016-10-14 | 70.88d |
| 131 | 4.2.7 | Visualización: visualizador OpenGL 4.X de las entidades tipo malla. Shader básico. Integración con el motor. Sin materiales, texturas, cámara ni luces | 1d? | 2016-10-14 | 2016-10-14 | 70.88d |
| 132 | 4.2.8 | Visualización: visualizador OpenGL 4.X de las entidades tipo malla. Shader básico. Con cámaras y luces de varios tipos. Visualización con registro de cámaras y luces. | 1d? | 2016-10-14 | 2016-10-14 | 70.88d |
| 133 | 4.2.9 | Gestor de recursos: Carga de materiales y texturas. Salida en modo texto | 1d? | 2016-10-14 | 2016-10-14 | 70.88d |
| 134 | 4.2.10 | Visualización: visualizador OpenGL 4.X de las entidades tipo malla. Shader básico. Añadiendo materiales y texturas. | 1d? | 2016-10-14 | 2016-10-14 | 70.88d |
| 135 | 4.2.11 | Fachada: creación de una fachada entre el motor y la aplicación. | 1d? | 2016-10-14 | 2016-10-14 | 70.88d |
| 136 | 4.2.12 | Visualización: visualizador OpenGL 4.X con cuatro shaders avanzados | 1d? | 2016-10-14 | 2016-10-14 | 70.88d |
| 137 | 4.2.13 | IGC: Aplicación: cargador de modelos, movimiento del modelo, de las luces y de la cámara. Cambio de modelo, materiales y texturas. Animaciones. Integración con el motor; ICED: Integración con el videojuego, sustitución de Irrlicht por el motor propio | 1d? | 2016-10-14 | 2016-10-14 | 70.88d |
| 138 | 4.2.14 | Optimizaciones del motor (4 técnicas) | 1d? | 2016-10-14 | 2016-10-14 | 70.88d |

| ID | WBS | Task | Duration | Start | Finish | Total slack |
| --- | --- | --- | --- | --- | --- | --- |
| 139 | 4.3 | **V1** | 1d? | 2016-10-14 | 2016-10-14 | 80.25d |
| 140 | 4.3.1 | Sistema de Waypoints para pathfinding continuo | 1d? | 2016-10-14 | 2016-10-14 | 70.88d |
| 141 | 4.3.2 | Sistema de depuración visual in-game de la IA | 1d? | 2016-10-14 | 2016-10-14 | 70.88d |
| 142 | 4.3.3 | Gestión de recursos de IA con Level-of-Detail (LoD) | 1d? | 2016-10-14 | 2016-10-14 | 70.88d |
| 143 | 4.4 | **V2** | 1d? | 2016-10-14 | 2016-10-14 | 80.25d |
| 144 | 4.4.1 | Diseño y creación de niveles | 1d? | 2016-10-14 | 2016-10-14 | 70.88d |
| 145 | 4.4.2 | Implementación de menús | 1d? | 2016-10-14 | 2016-10-14 | 70.88d |
| 146 | 4.4.3 | Implementación del HUD | 1d? | 2016-10-14 | 2016-10-14 | 70.88d |
| 147 | 4.4.4 | Implementación de clipping (comparativa de FPS con/sin oclusiones) | 1d? | 2016-10-14 | 2016-10-14 | 70.88d |
| 148 | 4.4.5 | Sistema de Level-Of-Detail (LoD) para la selección de la malla gráfica de los objetos | 1d? | 2016-10-14 | 2016-10-14 | 70.88d |
| 149 | 4.5 | **PD** | 1d? | 2016-10-14 | 2016-10-14 | 80.25d |
| 150 | 4.5.1 | Trailer juego/proyecto | 1d? | 2016-10-14 | 2016-10-14 | 70.88d |
| 151 | 4.5.2 | Vídeo final juego / explicación parte del proyecto | 1d? | 2016-10-14 | 2016-10-14 | 70.88d |
| 152 | 5 | **HITO 4** | 1d? | 2016-10-14 | 2016-10-14 | 80.25d |
| 153 | 5.1 | **PM** | 1d? | 2016-10-14 | 2016-10-14 | 80.25d |
| 154 | 5.1.1 | Detallar plan iteraciones del mes de Abril-Mayo. Creación Subtareas y precedencias en Project | 1d? | 2016-10-14 | 2016-10-14 | 70.88d |
| 155 | 5.1.2 | Detallar plan iteraciones del mes de Abril-Mayo. Asignar recursos a las tareas en Project. | 1d? | 2016-10-14 | 2016-10-14 | 70.88d |
| 156 | 5.1.3 | Registrar de tiempos y % de realización de tareas en Project | 1d? | 2016-10-14 | 2016-10-14 | 70.88d |
| 157 | 5.1.4 | Comparar la planificación prevista y real en Project hito 4. | 1d? | 2016-10-14 | 2016-10-14 | 70.88d |
| 158 | 5.1.5 | Confeccionar Informes de iteración e informe resumen de Hito 4. | 1d? | 2016-10-14 | 2016-10-14 | 70.88d |
| 159 | 5.1.6 | Elaborar la presentación del Hito 4 | 1d? | 2016-10-14 | 2016-10-14 | 70.88d |
| 160 | 5.1.7 | Exponer la presentación del Hito 4 | 1d? | 2016-10-14 | 2016-10-14 | 70.88d |
| 161 | 5.2 | **TAG** | 1d? | 2016-10-14 | 2016-10-14 | 80.25d |
| 162 | 5.2.1 | Efectos visuales (3 efectos) | 1d? | 2016-10-14 | 2016-10-14 | 70.88d |
| 163 | 5.2.2 | Extras (a determinar por el grupo) | 1d? | 2016-10-14 | 2016-10-14 | 70.88d |

| ID | WBS | Task | Duration | Start | Finish | Total slack |
| --- | --- | --- | --- | --- | --- | --- |
| 164 | 5.3 | **V2** | 1d? | 2016-10-14 | 2016-10-14 | 80.25d |
| 165 | 5.3.1 | Implementación de cesped y vegetación | 1d? | 2016-10-14 | 2016-10-14 | 70.88d |
| 166 | 5.3.2 | Implementación de sistemas de partículas | 1d? | 2016-10-14 | 2016-10-14 | 70.88d |
| 167 | 5.4 | **PD** | 1d? | 2016-10-14 | 2016-10-14 | 80.25d |
| 168 | 5.4.1 | Making of juego/proyecto | 1d? | 2016-10-14 | 2016-10-14 | 70.88d |
| 169 | 5.4.2 | Crear créditos | 1d? | 2016-10-14 | 2016-10-14 | 70.88d |
